# Year 3 Project Plan 7 30

Schedule from MS Project, 2008-07-14 to 2008-10-17, A marks actual dates.
Persistent Systems Pvt. Ltd.

## Calendars

- Standard: Mon-Fri 08:00-12:00, 13:00-17:00; Sat-Sun off. Exceptions (off unless hours are given): 2008-08-15 (Holiday).

## Resources

| Resource |
| --- |
| Chandrakant Talele |
| Lalit Chand |
| Chetan Patil |
| Atul Jawale |
| Hrishikesh Rajpathak |
| Rushikesh Subhedar |
| Deepak Shingan |
| Madhumita |

## Schedule

| ID | WBS | Task | Duration | Start | Finish | Predecessors | Complete | Remaining | Total slack | Free slack | Constraint | Resources | Work | Actual work |
| --- | --- | --- | --- | --- | --- | --- | --- | --- | --- | --- | --- | --- | --- | --- |
| 1 | 1 | **Year 3 Release1** | 69d? | 2008-07-14 A | 2008-10-17 |  | 69% | 21.35d? | 0d |  |  |  | 1976h | 1488h |
| 2 | 1.1 | **caB2B_Y3_020Technology Stack Migration** | 63d | 2008-07-14 A | 2008-10-09 |  | 72% | 17.51d | 4d |  |  |  | 440h | 308.8h |
| 3 | 1.1.1 | **Migrate to Jboss 4.0.5 GA** | 2d | 2008-07-14 A | 2008-07-15 A |  | 100% |  |  |  |  |  | 16h | 16h |
| 4 | 1.1.1.1 | Changes in existing codebase | 1d | 2008-07-14 A | 2008-07-14 A |  | 100% |  |  |  | start no earlier than 2008-07-14 | Lalit Chand | 8h | 8h |
| 5 | 1.1.1.2 | Changes in deployment process | 1d | 2008-07-15 A | 2008-07-15 A | 4 | 100% |  |  |  |  | Lalit Chand | 8h | 8h |
| 6 | 1.1.2 | **Migrate to EJB 3.0** | 60d | 2008-07-16 A | 2008-10-08 |  | 98% | 1.41d | 5d |  |  |  | 136h | 132.8h |
| 7 | 1.1.2.1 | Understanding EJB 3.0 | 5d | 2008-07-16 A | 2008-07-22 A | 5 | 100% |  |  |  |  | Lalit Chand | 40h | 40h |
| 8 | 1.1.2.2 | Changes in existing codebase | 3d | 2008-07-23 A | 2008-07-25 A | 7 | 100% |  |  |  |  | Lalit Chand | 24h | 24h |
| 9 | 1.1.2.3 | Changes in deployment process | 1d | 2008-07-28 A | 2008-07-28 A | 8 | 100% |  |  |  |  | Lalit Chand | 8h | 8h |
| 10 | 1.1.2.4 | Testing | 4d | 2008-07-29 A | 2008-08-01 A | 9 | 100% |  |  |  |  | Lalit Chand | 32h | 32h |
| 11 | 1.1.2.5 | Verification | 4d | 2008-08-04 A | 2008-10-08 | 10 | 90% | 0.4d | 5d |  |  | Lalit Chand | 32h | 28.8h |
| 12 | 1.1.3 | **Query Module** | 12d | 2008-08-04 A | 2008-08-20 A |  | 100% |  |  |  |  |  | 88h | 88h |
| 13 | 1.1.3.1 | Query Module Release UI | 3d | 2008-08-18 A | 2008-08-20 A |  | 100% |  |  |  |  | Deepak Shingan | 24h | 24h |
| 14 | 1.1.3.2 | Query Module Release backend changes | 8d | 2008-08-04 A | 2008-08-20 A |  | 100% |  |  |  |  | Chetan Patil | 64h | 64h |
| 15 | 1.1.4 | **Moving to caGrid 1.2** | 5d | 2008-08-25 A | 2008-08-29 A |  | 100% |  |  |  |  |  | 40h | 40h |
| 16 | 1.1.4.1 | caB2B Finding & Replacing appropriate jars | 2d | 2008-08-25 A | 2008-08-26 A |  | 100% |  |  |  | start no earlier than 2008-08-25 | Deepak Shingan | 16h | 16h |
| 17 | 1.1.4.2 | Admin Finding & Replacing appropriate jars | 2d | 2008-08-27 A | 2008-08-28 A | 16 | 100% |  |  |  |  | Deepak Shingan | 16h | 16h |
| 18 | 1.1.4.3 | Testing | 1d | 2008-08-29 A | 2008-08-29 A | 17 | 100% |  |  |  |  | Deepak Shingan | 8h | 8h |
| 19 | 1.1.5 | **New DE release** | 16d | 2008-09-18 | 2008-10-09 |  |  |  | 4d |  |  |  | 128h |  |
| 20 | 1.1.5.1 | Understand new design and identify changes | 2d | 2008-09-18 | 2008-09-19 |  |  |  | 6d | 0d | start no earlier than 2008-09-18 | Chandrakant Talele | 16h |  |
| 21 | 1.1.5.2 | Changs in cab2B and Admin | 10d | 2008-09-22 | 2008-10-03 | 20 |  |  | 6d | 0d |  | Chandrakant Talele | 80h |  |
| 22 | 1.1.5.3 | Verification | 4d | 2008-10-06 | 2008-10-09 | 21 |  |  | 6d |  |  | Chandrakant Talele | 32h |  |
| 23 | 1.1.6 | **java 1.5** | 5d | 2008-09-08 A | 2008-09-12 A |  | 100% |  |  |  |  |  | 32h | 32h |
| 24 | 1.1.6.1 | Identify changes for java 1.5 | 5d | 2008-09-08 A | 2008-09-12 A | 25 | 100% |  |  |  | finish no earlier than 2008-09-12 | Lalit Chand | 8h | 8h |
| 25 | 1.1.6.2 | Solution for client side java 6 components | 3d | 2008-09-08 A | 2008-09-12 A |  | 100% |  |  |  |  | Lalit Chand | 24h | 24h |

| ID | WBS | Task | Duration | Start | Finish | Predecessors | Complete | Remaining | Total slack | Free slack | Constraint | Resources | Work | Actual work |
| --- | --- | --- | --- | --- | --- | --- | --- | --- | --- | --- | --- | --- | --- | --- |
| 26 | 1.2 | **caB2B_Y3_001-Automatic cache update between admin and cab2b server** | 21d? | 2008-09-01 A | 2008-09-29 |  | 65% | 7.4d? | 5d |  |  |  | 160h | 108.8h |
| 27 | 1.2.1 | Requirement | 1d | 2008-09-01 A | 2008-09-01 A | 76 | 100% |  |  |  |  | Hrishikesh Rajpathak | 8h | 8h |
| 28 | 1.2.2 | **Investigation** | 18d | 2008-09-02 A | 2008-09-25 | 27 | 70% | 5.4d | 3d | 0d |  |  | 144h | 100.8h |
| 29 | 1.2.2.1 | Investigate Component | 14d | 2008-09-02 A | 2008-09-19 | 27 | 90% | 1.4d | 3d | 0d | finish no earlier than 2008-09-19 | Hrishikesh Rajpathak | 112h | 100.8h |
| 30 | 1.2.2.2 | Developing Prototype | 2d | 2008-09-22 | 2008-09-23 | 29 |  |  | 4d | 0d |  | Hrishikesh Rajpathak | 16h |  |
| 31 | 1.2.2.3 | Design | 2d | 2008-09-24 | 2008-09-25 | 30 |  |  | 4d |  |  | Hrishikesh Rajpathak | 16h |  |
| 32 | 1.2.3 | **Implementation** | 2d? | 2008-09-26 | 2008-09-29 | 28 |  |  | 3d |  |  |  | 8h |  |
| 33 | 1.2.3.1 | Separating out Implementation Deployment Unit | 1d? | 2008-09-26 | 2008-09-26 |  |  |  | 4d | 0d |  | Hrishikesh Rajpathak | 8h |  |
| 34 | 1.2.3.2 | Changes needed in Deployment Process | 1d? | 2008-09-29 | 2008-09-29 | 33 |  |  | 4d |  |  |  |  |  |
| 35 | 1.3 | **Representing grid user in caB2B** | 35d? | 2008-08-07 A | 2008-09-25 |  | 68% | 11.31d? | 2d | 0d |  |  | 104h | 70.4h |
| 36 | 1.3.1 | Investigating APIs needed | 4d | 2008-08-07 A | 2008-08-12 A |  | 100% |  |  |  |  | Lalit Chand | 32h | 32h |
| 37 | 1.3.2 | Design to store user identity locally | 8d | 2008-09-15 A | 2008-09-24 | 36 | 60% | 3.2d | 2d | 0d |  | Lalit Chand | 64h | 38.4h |
| 38 | 1.3.3 | Design review by external parties | 1d? | 2008-09-25 | 2008-09-25 | 37 |  |  | 2d |  |  | Lalit Chand | 8h |  |
| 39 | 1.4 | **caB2B_Y3_002-User based experiments** | 5d? | 2008-09-26 | 2008-10-02 |  |  |  | 2d |  |  |  | 40h |  |
| 40 | 1.4.1 | Requirement | 1d? | 2008-09-26 | 2008-09-26 | 35 |  |  | 2d | 0d |  | Lalit Chand | 8h |  |
| 41 | 1.4.2 | Design | 1d? | 2008-09-29 | 2008-09-29 | 40 |  |  | 2d | 0d |  | Lalit Chand | 8h |  |
| 42 | 1.4.3 | **Implementation** | 3d? | 2008-09-30 | 2008-10-02 | 41 |  |  | 2d |  |  |  | 24h |  |
| 43 | 1.4.3.1 | Saving experiments on user basis | 1d? | 2008-09-30 | 2008-09-30 |  |  |  | 2d | 0d |  | Lalit Chand | 8h |  |
| 44 | 1.4.3.2 | Changes needed at client-server interface to pass user info | 1d? | 2008-10-01 | 2008-10-01 | 43 |  |  | 2d | 0d |  | Lalit Chand | 8h |  |
| 45 | 1.4.3.3 | Fetch and display experiments based on user | 1d? | 2008-10-02 | 2008-10-02 | 44 |  |  | 2d |  |  | Lalit Chand | 8h |  |
| 46 | 1.5 | **caB2B_Y3_003-User based saved queries** | 1d? | 2008-09-26 | 2008-09-26 | 35 |  |  | 4d |  |  |  |  |  |
| 47 | 1.5.1 | Requirement | 1d? | 2008-09-26 | 2008-09-26 |  |  |  | 4d |  |  |  |  |  |
| 48 | 1.5.2 | Design | 1d? | 2008-09-26 | 2008-09-26 |  |  |  | 4d |  |  |  |  |  |
| 49 | 1.5.3 | **Implementation** | 1d? | 2008-09-26 | 2008-09-26 |  |  |  | 4d |  |  |  |  |  |
| 50 | 1.5.3.1 | Saving queries on user basis | 1d? | 2008-09-26 | 2008-09-26 |  |  |  | 4d |  |  |  |  |  |
| 51 | 1.5.3.2 | Changes needed at client-server interface to pass user info | 1d? | 2008-09-26 | 2008-09-26 |  |  |  | 4d |  |  |  |  |  |

| ID | WBS | Task | Duration | Start | Finish | Predecessors | Complete | Constraint | Resources | Work | Actual work |
| --- | --- | --- | --- | --- | --- | --- | --- | --- | --- | --- | --- |
| 52 | 1.6 | **caB2B_Y3_006-Home page experiments links functional + show all** | 12d | 2008-07-14 A | 2008-07-29 A |  | 100% |  |  | 96h | 96h |
| 53 | 1.6.1 | Requirement | 1d | 2008-07-14 A | 2008-07-14 A |  | 100% | start no earlier than 2008-07-14 | Deepak Shingan | 8h | 8h |
| 54 | 1.6.2 | UI Mockups | 1d | 2008-07-15 A | 2008-07-15 A | 53 | 100% |  | Deepak Shingan | 8h | 8h |
| 55 | 1.6.3 | Design | 1d | 2008-07-16 A | 2008-07-16 A | 54 | 100% |  | Deepak Shingan | 8h | 8h |
| 56 | 1.6.4 | **Implementation** | 9d | 2008-07-17 A | 2008-07-29 A |  | 100% |  |  | 72h | 72h |
| 57 | 1.6.4.1 | Showing recent experiments | 2d | 2008-07-17 A | 2008-07-18 A | 55 | 100% |  | Deepak Shingan | 16h | 16h |
| 58 | 1.6.4.2 | Making links in stack box funtional | 2d | 2008-07-21 A | 2008-07-22 A | 57 | 100% |  | Deepak Shingan | 16h | 16h |
| 59 | 1.6.4.3 | Show All to display all experiments on right side | 3d | 2008-07-23 A | 2008-07-25 A | 58 | 100% |  | Deepak Shingan | 24h | 24h |
| 60 | 1.6.4.4 | Click on any experiment from show all table to open experiment | 2d | 2008-07-28 A | 2008-07-29 A | 59 | 100% |  | Deepak Shingan | 16h | 16h |
| 61 | 1.7 | **caB2B_Y3_007-Home page category links functional + show all** | 12d | 2008-07-30 A | 2008-08-14 A |  | 100% |  |  | 96h | 96h |
| 62 | 1.7.1 | Requirement | 1d | 2008-07-30 A | 2008-07-30 A | 52 | 100% |  | Deepak Shingan | 8h | 8h |
| 63 | 1.7.2 | UI Mockups | 1d | 2008-07-31 A | 2008-07-31 A | 62 | 100% |  | Deepak Shingan | 8h | 8h |
| 64 | 1.7.3 | Design | 1d | 2008-08-01 A | 2008-08-01 A | 63 | 100% |  | Deepak Shingan | 8h | 8h |
| 65 | 1.7.4 | **Implementation** | 9d | 2008-08-04 A | 2008-08-14 A |  | 100% |  |  | 72h | 72h |
| 66 | 1.7.4.1 | Showing all categories | 2d | 2008-08-04 A | 2008-08-05 A | 64 | 100% |  | Deepak Shingan | 16h | 16h |
| 67 | 1.7.4.2 | Clicking on category in stack box to open add limit page | 2d | 2008-08-06 A | 2008-08-07 A | 66 | 100% |  | Deepak Shingan | 16h | 16h |
| 68 | 1.7.4.3 | Show All to display all categories on right side | 3d | 2008-08-08 A | 2008-08-12 A | 67 | 100% |  | Deepak Shingan | 24h | 24h |
| 69 | 1.7.4.4 | Click on any category from show all table to open it in add limit page | 2d | 2008-08-13 A | 2008-08-14 A | 68 | 100% |  | Deepak Shingan | 16h | 16h |
| 70 | 1.8 | **caB2B_Y3_008-Popular categories** | 24d | 2008-07-28 A | 2008-08-29 A |  | 100% |  |  | 184h | 184h |
| 71 | 1.8.1 | Requirement | 8d | 2008-07-28 A | 2008-08-06 A |  | 100% | start no earlier than 2008-07-28 | Hrishikesh Rajpathak | 64h | 64h |
| 72 | 1.8.2 | Design | 5d | 2008-08-07 A | 2008-08-14 A | 71 | 100% | finish no earlier than 2008-08-14 | Hrishikesh Rajpathak | 40h | 40h |
| 73 | 1.8.3 | **Implementation** | 10d | 2008-08-18 A | 2008-08-29 A |  | 100% |  |  | 80h | 80h |
| 74 | 1.8.3.1 | Calculating popularity | 3d | 2008-08-18 A | 2008-08-20 A | 72 | 100% |  | Hrishikesh Rajpathak | 24h | 24h |
| 75 | 1.8.3.2 | Storing and using popularity | 4d | 2008-08-21 A | 2008-08-26 A | 74 | 100% | finish no earlier than 2008-08-08 | Hrishikesh Rajpathak | 32h | 32h |
| 76 | 1.8.3.3 | Unit Testing | 3d | 2008-08-27 A | 2008-08-29 A | 75 | 100% |  | Hrishikesh Rajpathak | 24h | 24h |

| ID | WBS | Task | Duration | Start | Finish | Predecessors | Complete | Remaining | Total slack | Constraint | Resources | Work | Actual work |
| --- | --- | --- | --- | --- | --- | --- | --- | --- | --- | --- | --- | --- | --- |
| 77 | 1.9 | **caB2B_Y3_009-Fixing the current washU services for index service** | 21d | 2008-07-14 A | 2008-08-11 A |  | 100% |  |  |  |  | 168h | 168h |
| 78 | 1.9.1 | Learning service, discovery and metadata | 5d | 2008-07-14 A | 2008-07-18 A |  | 100% |  |  |  | Atul Jawale | 40h | 40h |
| 79 | 1.9.2 | Finding the cause | 5d | 2008-07-21 A | 2008-07-25 A | 78 | 100% |  |  |  | Atul Jawale | 40h | 40h |
| 80 | 1.9.3 | Investigating on fixes / solutions | 5d | 2008-07-28 A | 2008-08-01 A | 79 | 100% |  |  |  | Atul Jawale | 40h | 40h |
| 81 | 1.9.4 | Fixing Services | 6d | 2008-08-04 A | 2008-08-11 A | 80 | 100% |  |  |  | Atul Jawale | 48h | 48h |
| 82 | 1.10 | **caArray caTissue Integration Bug# 8780** | 6d | 2008-08-27 A | 2008-09-03 A |  | 100% |  |  |  |  | 48h | 48h |
| 83 | 1.10.1 | Investigation | 2d | 2008-08-27 A | 2008-08-28 A | 119 | 100% |  |  |  | Chetan Patil | 16h | 16h |
| 84 | 1.10.2 | Testing Patch | 2d | 2008-08-29 A | 2008-09-01 A | 83 | 100% |  |  |  | Chetan Patil | 16h | 16h |
| 85 | 1.10.3 | Pushing patch into WashU instance | 2d | 2008-09-02 A | 2008-09-03 A | 84 | 100% |  |  |  | Chetan Patil | 16h | 16h |
| 86 | 1.11 | **Exposing DCQL’s on the User Interface** | 28d | 2008-08-28 A | 2008-10-06 |  | 52% | 13.33d | 0d |  |  | 184h | 88h |
| 87 | 1.11.1 | Requirement | 1d | 2008-08-28 A | 2008-08-28 A | 150 | 100% |  |  | finish no earlier than 2008-09-16 | Chetan Patil | 8h | 8h |
| 88 | 1.11.2 | Learning CQL | 5d | 2008-08-29 A | 2008-09-04 A | 87 | 100% |  |  |  | Lalit Chand | 40h | 40h |
| 89 | 1.11.3 | Understanding existing implementation | 4d | 2008-09-05 A | 2008-09-10 A | 88 | 100% |  |  |  | Chetan Patil | 32h | 32h |
| 90 | 1.11.4 | UI mockups | 1d | 2008-09-22 A | 2008-09-22 A |  | 100% |  |  | finish no earlier than 2008-09-22 | Atul Jawale | 8h | 8h |
| 91 | 1.11.5 | Design | 2d | 2008-09-23 | 2008-09-24 | 90 |  |  | 0d |  | Atul Jawale; Chetan Patil | 32h |  |
| 92 | 1.11.6 | **Implementation** | 8d | 2008-09-25 | 2008-10-06 |  |  |  | 0d |  |  | 64h |  |
| 93 | 1.11.6.1 | UI implementation | 4d | 2008-09-25 | 2008-09-30 | 91 |  |  | 0d | start no earlier than 2008-09-09 | Atul Jawale | 32h |  |
| 94 | 1.11.6.2 | Backend integration | 4d | 2008-10-01 | 2008-10-06 | 93 |  |  | 0d |  | Chetan Patil | 32h |  |
| 95 | 1.12 | **caB2B_Y3_005-User to override the URLs** | 16d | 2008-08-13 A | 2008-09-04 A |  | 100% |  |  |  |  | 128h | 128h |
| 96 | 1.12.1 | Requirement | 1d | 2008-08-13 A | 2008-08-13 A |  | 100% |  |  |  | Atul Jawale | 8h | 8h |
| 97 | 1.12.2 | UI mockups | 1d | 2008-08-14 A | 2008-08-14 A | 96 | 100% |  |  |  | Atul Jawale | 8h | 8h |
| 98 | 1.12.3 | Design | 1d | 2008-08-18 A | 2008-08-18 A | 97 | 100% |  |  |  | Atul Jawale | 8h | 8h |
| 99 | 1.12.4 | **Implementation** | 13d | 2008-08-19 A | 2008-09-04 A | 98 | 100% |  |  |  |  | 104h | 104h |
| 100 | 1.12.4.1 | UI implementation | 5d | 2008-08-19 A | 2008-08-25 A | 98 | 100% |  |  | finish no earlier than 2008-09-17 | Atul Jawale | 40h | 40h |
| 101 | 1.12.4.2 | Backend integration | 3d | 2008-08-26 A | 2008-08-28 A |  | 100% |  |  | start no earlier than 2008-09-18 | Atul Jawale | 24h | 24h |
| 102 | 1.12.4.3 | Unit testing | 2d | 2008-09-03 A | 2008-09-04 A | 103 | 100% |  |  |  | Atul Jawale | 16h | 16h |
| 103 | 1.12.4.4 | UE enhanements | 3d | 2008-08-29 A | 2008-09-02 A | 101 | 100% |  |  |  | Atul Jawale | 24h | 24h |

Notes:
- 100: Requirement changed by Mukesh on 10th sep(on weekly status call)

| ID | WBS | Task | Duration | Start | Finish | Predecessors | Complete | Remaining | Total slack | Free slack | Constraint | Resources | Work | Actual work |
| --- | --- | --- | --- | --- | --- | --- | --- | --- | --- | --- | --- | --- | --- | --- |
| 104 | 1.13 | **Showing results of a query grouped by the services** | 5d? | 2008-07-14 | 2008-07-18 |  |  |  | 64d |  |  |  |  |  |
| 105 | 1.13.1 | Requirement | 1d | 2008-07-14 | 2008-07-14 |  |  |  | 62d | 0d |  |  |  |  |
| 106 | 1.13.2 | UI mockups | 1d | 2008-07-15 | 2008-07-15 | 105 |  |  | 64d | 0d |  |  |  |  |
| 107 | 1.13.3 | Design | 1d? | 2008-07-16 | 2008-07-16 | 106 |  |  | 64d |  |  |  |  |  |
| 108 | 1.13.4 | **Implementation** | 2d? | 2008-07-17 | 2008-07-18 |  |  |  | 62d |  |  |  |  |  |
| 109 | 1.13.4.1 | UI implementation | 1d? | 2008-07-17 | 2008-07-17 | 107 |  |  | 64d | 0d |  |  |  |  |
| 110 | 1.13.4.2 | Backend integration | 1d? | 2008-07-18 | 2008-07-18 | 109 |  |  | 64d |  |  |  |  |  |
| 111 | 1.14 | **Shipping of metadata along with installer** | 2d | 2008-07-14 | 2008-07-15 |  |  |  | 65d |  |  |  | 16h |  |
| 112 | 1.14.1 | Changes in installation script | 1d | 2008-07-14 | 2008-07-14 |  |  |  | 67d | 0d |  | Chandrakant Talele | 8h |  |
| 113 | 1.14.2 | updating installation manuals | 1d | 2008-07-15 | 2008-07-15 | 112 |  |  | 67d |  |  | Chandrakant Talele | 8h |  |
| 114 | 1.15 | Knowledge Transfer from Deepak | 11d | 2008-09-05 A | 2008-09-19 |  | 64% | 4d | 18d |  | start no earlier than 2008-09-05 | Atul Jawale; Deepak Shingan | 176h | 112h |
| 115 | 1.16 | **Bugs Fixing** | 36d | 2008-07-31 A | 2008-09-19 |  | 83% | 6d | 9d |  |  |  | 80h | 80h |
| 116 | 1.16.1 | Bug# 8070 | 2d | 2008-07-31 A | 2008-08-01 A | 156 | 100% |  |  |  | start no earlier than 2008-08-04 | Chetan Patil | 16h | 16h |
| 117 | 1.16.2 | caTissue core service instance | 1d | 2008-08-12 A | 2008-08-12 A | 81 | 100% |  |  |  | start no earlier than 2008-08-08 | Atul Jawale | 8h | 8h |
| 118 | 1.16.3 | Bug 9090 & 9138 fix | 2d | 2008-08-21 A | 2008-08-22 A | 14 | 100% |  |  |  |  | Chetan Patil | 16h | 16h |
| 119 | 1.16.4 | Bug 9221 fix | 2d | 2008-08-25 A | 2008-08-26 A | 118 | 100% |  |  |  |  | Chetan Patil | 16h | 16h |
| 120 | 1.16.5 | Bug # 8911 | 1d | 2008-09-04 A | 2008-09-04 A | 85 | 100% |  |  |  |  | Chetan Patil | 8h | 8h |
| 121 | 1.16.6 | Bug # 8814 | 1d | 2008-09-05 A | 2008-09-05 A | 120 | 100% |  |  |  |  | Chetan Patil | 8h | 8h |
| 122 | 1.16.7 | Bug # 8839 | 1d | 2008-09-08 A | 2008-09-08 A | 121 | 100% |  |  |  |  | Chetan Patil | 8h | 8h |
| 123 | 1.16.8 | Bug # 9604 | 2d | 2008-09-18 | 2008-09-19 |  |  |  | 11d |  | start no earlier than 2008-09-18 |  |  |  |
| 124 | 1.17 | QA cycle | 7d | 2008-10-07 | 2008-10-15 | 26, 39, 46, 52, 61, 70, 77, 82, 86, 115, 95 |  |  | 0d |  |  | Madhumita | 56h |  |
| 125 | 1.18 | **Documents** | 13d | 2008-07-14 | 2008-07-30 |  |  |  | 52d |  |  |  |  |  |
| 126 | 1.18.1 | Requirements | 3d | 2008-07-14 | 2008-07-16 |  |  |  | 52d | 0d |  |  |  |  |
| 127 | 1.18.2 | cab2b design document | 5d | 2008-07-17 | 2008-07-23 | 126 |  |  | 54d | 0d |  |  |  |  |
| 128 | 1.18.3 | caB2B user manual | 5d | 2008-07-24 | 2008-07-30 | 127 |  |  | 54d |  |  |  |  |  |
| 129 | 1.19 | Release Activity | 2d | 2008-10-16 | 2008-10-17 | 124, 128 |  |  | 0d |  |  |  |  |  |

| ID | WBS | Task | Duration | Start | Finish | Complete | Remaining | Total slack | Free slack | Resources | Work | Actual work |
| --- | --- | --- | --- | --- | --- | --- | --- | --- | --- | --- | --- | --- |
| 130 | 2 | **Year 3 Release2** | 43d? | 2008-07-14 A | 2008-09-11 | 4% | 41.36d? | 24d |  |  | 32h | 32h |
| 131 | 2.1 | **caB2B_Y3_004-Asynchronous execution of queries** | 1d? | 2008-07-14 | 2008-07-14 |  |  | 66d |  |  |  |  |
| 132 | 2.1.1 | Requirement | 1d? | 2008-07-14 | 2008-07-14 |  |  | 68d |  |  |  |  |
| 133 | 2.1.2 | Design | 1d? | 2008-07-14 | 2008-07-14 |  |  | 68d |  |  |  |  |
| 134 | 2.1.3 | **Implementation** | 1d? | 2008-07-14 | 2008-07-14 |  |  | 66d |  |  |  |  |
| 135 | 2.1.3.1 | Represent schedule | 1d? | 2008-07-14 | 2008-07-14 |  |  | 68d |  |  |  |  |
| 136 | 2.1.3.2 | Storing schedule and firing jobs | 1d? | 2008-07-14 | 2008-07-14 |  |  | 68d |  |  |  |  |
| 137 | 2.1.3.3 | Implementing job for query execution | 1d? | 2008-07-14 | 2008-07-14 |  |  | 68d |  |  |  |  |
| 138 | 2.2 | **caB2B_Y3_012-Asynchronous of save data list** | 1d? | 2008-07-14 | 2008-07-14 |  |  | 66d |  |  |  |  |
| 139 | 2.2.1 | Requirement | 1d? | 2008-07-14 | 2008-07-14 |  |  | 68d |  |  |  |  |
| 140 | 2.2.2 | Investigation | 1d? | 2008-07-14 | 2008-07-14 |  |  | 68d |  |  |  |  |
| 141 | 2.2.3 | Investigate Component | 1d? | 2008-07-14 | 2008-07-14 |  |  | 68d |  |  |  |  |
| 142 | 2.2.4 | Developing Prototype | 1d? | 2008-07-14 | 2008-07-14 |  |  | 68d |  |  |  |  |
| 143 | 2.2.5 | Design | 1d? | 2008-07-14 | 2008-07-14 |  |  | 68d |  |  |  |  |
| 144 | 2.2.6 | **Implementation** | 1d? | 2008-07-14 | 2008-07-14 |  |  | 66d |  |  |  |  |
| 145 | 2.2.6.1 | Separating out Implementation Deployment Unit | 1d? | 2008-07-14 | 2008-07-14 |  |  | 68d |  |  |  |  |
| 146 | 2.2.6.2 | Changes needed in Deployment Process | 1d? | 2008-07-14 | 2008-07-14 |  |  | 68d |  |  |  |  |
| 147 | 2.3 | **caB2B_Y3_016-Support basic analytical services (support for ICR services, if needed, do customizations)** | 43d? | 2008-07-14 A | 2008-09-11 | 6% | 40.39d? | 24d |  |  | 32h | 32h |
| 148 | 2.3.1 | **Requirement** | 43d? | 2008-07-14 A | 2008-09-11 | 6% | 40.39d? | 26d |  |  | 32h | 32h |
| 149 | 2.3.1.1 | **Investigation** | 22d? | 2008-07-14 A | 2008-08-12 | 67% | 7.33d? | 47d |  |  | 32h | 32h |
| 150 | 2.3.1.1.1 | Investigating APIs needed | 4d | 2008-08-07 A | 2008-08-12 A | 100% |  |  |  | Lalit Chand | 32h | 32h |
| 151 | 2.3.1.1.2 | Design to store user identity locally | 1d? | 2008-07-14 | 2008-07-14 |  |  | 68d |  |  |  |  |
| 152 | 2.3.1.1.3 | Design review by external parties | 1d? | 2008-07-14 | 2008-07-14 |  |  | 68d |  |  |  |  |
| 153 | 2.3.1.2 | Investigate Component | 1d? | 2008-07-14 | 2008-07-14 |  |  | 68d |  |  |  |  |
| 154 | 2.3.1.3 | Developing Prototype | 37d | 2008-07-14 | 2008-09-03 |  |  | 24d | 0d |  |  |  |

| ID | WBS | Task | Duration | Start | Finish | Predecessors | Total slack | Free slack |
| --- | --- | --- | --- | --- | --- | --- | --- | --- |
| 155 | 2.3.1.4 | **Schedular** | 7d | 2008-07-14 | 2008-07-22 |  | 51d |  |
| 156 | 2.3.1.4.1 | Investigate Component | 2d | 2008-07-14 | 2008-07-15 |  | 53d | 0d |
| 157 | 2.3.1.4.2 | Developing Prototype | 5d | 2008-07-16 | 2008-07-22 | 156 | 53d | 0d |
| 158 | 2.3.1.5 | **Notification** | 9d | 2008-07-23 | 2008-08-04 |  | 51d |  |
| 159 | 2.3.1.5.1 | UI mockup | 1d | 2008-07-23 | 2008-07-23 | 157 | 53d | 0d |
| 160 | 2.3.1.5.2 | UI implementation | 3d | 2008-07-24 | 2008-07-28 | 159 | 53d | 0d |
| 161 | 2.3.1.5.3 | Backend Implementation | 5d | 2008-07-29 | 2008-08-04 | 160 | 53d |  |
| 162 | 2.3.1.6 | **Design** | 3d? | 2008-09-04 | 2008-09-08 | 154 | 24d |  |
| 163 | 2.3.1.6.1 | Implementation | 1d? | 2008-09-04 | 2008-09-04 |  | 26d | 0d |
| 164 | 2.3.1.6.2 | Separating out Implementation Deployment Unit | 1d? | 2008-09-05 | 2008-09-05 | 163 | 26d | 0d |
| 165 | 2.3.1.6.3 | Changes needed in Deployment Process | 1d? | 2008-09-08 | 2008-09-08 | 164 | 26d | 0d |
| 166 | 2.3.1.7 | **Representing grid user in caB2B** | 3d? | 2008-09-09 | 2008-09-11 | 165 | 24d |  |
| 167 | 2.3.1.7.1 | Expansion of categories | 1d? | 2008-09-09 | 2008-09-09 |  | 26d | 0d |
| 168 | 2.3.1.7.2 | Schedular component + notification functionality | 1d? | 2008-09-10 | 2008-09-10 | 167 | 26d | 0d |
| 169 | 2.4 | **caB2B_Y3_017-Viewers for supported analytical services** | 1d? | 2008-07-14 | 2008-07-14 |  | 66d |  |
| 170 | 2.4.1 | Requirement | 1d? | 2008-07-14 | 2008-07-14 |  | 68d |  |
| 171 | 2.4.2 | **Investigation** | 1d? | 2008-07-14 | 2008-07-14 |  | 66d |  |
| 172 | 2.4.2.1 | Investigate Component | 1d? | 2008-07-14 | 2008-07-14 |  | 68d |  |
| 173 | 2.4.2.2 | Developing Prototype | 1d? | 2008-07-14 | 2008-07-14 |  | 68d |  |
| 174 | 2.4.2.3 | Design | 1d? | 2008-07-14 | 2008-07-14 |  | 68d |  |
| 175 | 2.4.3 | **Implementation** | 1d? | 2008-07-14 | 2008-07-14 |  | 66d |  |
| 176 | 2.4.3.1 | Separating out Implementation Deployment Unit | 1d? | 2008-07-14 | 2008-07-14 |  | 68d |  |
| 177 | 2.4.3.2 | Changes needed in Deployment Process | 1d? | 2008-07-14 | 2008-07-14 |  | 68d |  |
| 178 | 2.5 | **caB2B_Y3_015-Support for getting probe data from caArray. For CEL files no need to bring data back to cab2b server, just get the URL and send it to analytical service** | 1d? | 2008-07-14 | 2008-07-14 |  | 66d |  |
| 179 | 2.5.1 | Requirement | 1d? | 2008-07-14 | 2008-07-14 |  | 68d |  |
| 180 | 2.5.2 | Investigation | 1d? | 2008-07-14 | 2008-07-14 |  | 68d |  |
| 181 | 2.5.3 | Investigate Component | 1d? | 2008-07-14 | 2008-07-14 |  | 68d |  |
| 182 | 2.5.4 | Developing Prototype | 1d? | 2008-07-14 | 2008-07-14 |  | 68d |  |
| 183 | 2.5.5 | Design | 1d? | 2008-07-14 | 2008-07-14 |  | 68d |  |

| ID | WBS | Task | Duration | Start | Finish | Total slack |
| --- | --- | --- | --- | --- | --- | --- |
| 184 | 2.5.6 | **Implementation** | 1d? | 2008-07-14 | 2008-07-14 | 66d |
| 185 | 2.5.6.1 | Separating out Implementation Deployment Unit | 1d? | 2008-07-14 | 2008-07-14 | 68d |
| 186 | 2.5.6.2 | Changes needed in Deployment Process | 1d? | 2008-07-14 | 2008-07-14 | 68d |
| 187 | 2.6 | **caB2B_Y3_014-Experiments with multiple datalists, edit expr to add data list with way to re-query (more likely)** | 1d? | 2008-07-14 | 2008-07-14 | 66d |
| 188 | 2.6.1 | Requirement | 1d? | 2008-07-14 | 2008-07-14 | 68d |
| 189 | 2.6.2 | UI Mockups | 1d? | 2008-07-14 | 2008-07-14 | 68d |
| 190 | 2.6.3 | Design | 1d? | 2008-07-14 | 2008-07-14 | 68d |
| 191 | 2.6.4 | **Implementation** | 1d? | 2008-07-14 | 2008-07-14 | 66d |
| 192 | 2.6.4.1 | UI for data list viewer | 1d? | 2008-07-14 | 2008-07-14 | 68d |
| 193 | 2.6.4.2 | Changes needed in Experiment module | 1d? | 2008-07-14 | 2008-07-14 | 68d |
| 194 | 2.6.4.3 | backend support for multiple data list | 1d? | 2008-07-14 | 2008-07-14 | 68d |
| 195 | 2.7 | **caB2B_Y3_013-intermodel joins for a group like washU, NCICB , Intermodel joins with pair of service instances** | 1d? | 2008-07-14 | 2008-07-14 | 66d |
| 196 | 2.7.1 | Requirement | 1d? | 2008-07-14 | 2008-07-14 | 68d |
| 197 | 2.7.2 | Investigation | 1d? | 2008-07-14 | 2008-07-14 | 68d |
| 198 | 2.7.3 | Investigate Component | 1d? | 2008-07-14 | 2008-07-14 | 68d |
| 199 | 2.7.4 | Developing Prototype | 1d? | 2008-07-14 | 2008-07-14 | 68d |
| 200 | 2.7.5 | Design | 1d? | 2008-07-14 | 2008-07-14 | 68d |
| 201 | 2.7.6 | **Implementation** | 1d? | 2008-07-14 | 2008-07-14 | 66d |
| 202 | 2.7.6.1 | Separating out Implementation Deployment Unit | 1d? | 2008-07-14 | 2008-07-14 | 68d |
| 203 | 2.7.6.2 | Changes needed in Deployment Process | 1d? | 2008-07-14 | 2008-07-14 | 68d |
| 204 | 2.8 | caB2B_Y3_020Technology Stack Migration | 1d? | 2008-07-14 | 2008-07-14 | 66d |
| 205 | 3 | **Year 3 Release3** | 1d? | 2008-07-14 | 2008-07-14 | 66d |
| 206 | 3.1 | **caB2B_Y3_010-Support WS enumerations data services** | 1d? | 2008-07-14 | 2008-07-14 | 66d |
| 207 | 3.1.1 | Requirement | 1d? | 2008-07-14 | 2008-07-14 | 68d |
| 208 | 3.1.2 | Investigation | 1d? | 2008-07-14 | 2008-07-14 | 68d |

| ID | WBS | Task | Duration | Start | Finish | Total slack |
| --- | --- | --- | --- | --- | --- | --- |
| 209 | 3.1.3 | **Investigate Component** | 1d? | 2008-07-14 | 2008-07-14 | 66d |
| 210 | 3.1.3.1 | Developing Prototype | 1d? | 2008-07-14 | 2008-07-14 | 68d |
| 211 | 3.1.3.2 | **Design** | 1d? | 2008-07-14 | 2008-07-14 | 66d |
| 212 | 3.1.3.2.1 | Implementation | 1d? | 2008-07-14 | 2008-07-14 | 68d |
| 213 | 3.1.3.2.2 | Separating out Implementation Deployment Unit | 1d? | 2008-07-14 | 2008-07-14 | 68d |
| 214 | 3.1.3.3 | Changes needed in Deployment Process | 1d? | 2008-07-14 | 2008-07-14 | 68d |
| 215 | 3.2 | **caB2B_Y3_019-Intermodel joins with multiple attributes** | 1d? | 2008-07-14 | 2008-07-14 | 66d |
| 216 | 3.2.1 | Requirement | 1d? | 2008-07-14 | 2008-07-14 | 68d |
| 217 | 3.2.2 | **Investigation** | 1d? | 2008-07-14 | 2008-07-14 | 66d |
| 218 | 3.2.2.1 | Investigate Component | 1d? | 2008-07-14 | 2008-07-14 | 68d |
| 219 | 3.2.2.2 | Developing Prototype | 1d? | 2008-07-14 | 2008-07-14 | 68d |
| 220 | 3.2.3 | Design | 1d? | 2008-07-14 | 2008-07-14 | 68d |
| 221 | 3.2.4 | **Implementation** | 1d? | 2008-07-14 | 2008-07-14 | 66d |
| 222 | 3.2.4.1 | Separating out Implementation Deployment Unit | 1d? | 2008-07-14 | 2008-07-14 | 68d |
| 223 | 3.2.4.2 | Changes needed in Deployment Process | 1d? | 2008-07-14 | 2008-07-14 | 68d |
| 224 | 3.3 | **Advanced result view** | 1d? | 2008-07-14 | 2008-07-14 | 66d |
| 225 | 3.3.1 | Understanding requirement | 1d? | 2008-07-14 | 2008-07-14 | 68d |
| 226 | 3.3.2 | UI mock ups | 1d? | 2008-07-14 | 2008-07-14 | 68d |
| 227 | 3.3.3 | Design | 1d? | 2008-07-14 | 2008-07-14 | 68d |
| 228 | 3.3.4 | **UI implementation** | 1d? | 2008-07-14 | 2008-07-14 | 66d |
| 229 | 3.3.4.1 | Changes on define result view(step 3 of wizard) | 1d? | 2008-07-14 | 2008-07-14 | 68d |
| 230 | 3.3.4.2 | Changes in the advanced view result | 1d? | 2008-07-14 | 2008-07-14 | 68d |
| 231 | 3.3.5 | **Backend implementation** | 1d? | 2008-07-14 | 2008-07-14 | 66d |
| 232 | 3.3.5.1 | query changes to get all the objects asked in the result view | 1d? | 2008-07-14 | 2008-07-14 | 68d |
| 233 | 3.3.5.2 | changes in datalist | 1d? | 2008-07-14 | 2008-07-14 | 68d |
| 234 | 3.4 | Metadata that has been searched for should be highlighted in the Add Limit panel. | 1d? | 2008-07-14 | 2008-07-14 | 66d |
| 235 | 3.5 | Expansion of categories to create category across different applications | 1d? | 2008-07-14 | 2008-07-14 | 66d |

Notes:
- 224: Use case: User has created a query and now wants to add a new class without any limits, just to fetch this additional associated information. / For example, while finding the GBM specimens user wants to know under what collection protocol the samples were collected. / The result view should also be a more user friendly view where classes are represented in a tree like format.

| ID | WBS | Task | Duration | Start | Finish | Total slack |
| --- | --- | --- | --- | --- | --- | --- |
| 236 | 3.6 | **caB2B_Y3_018-Returning result of a federated query even if only one of the instances is failed** | 1d? | 2008-07-14 | 2008-07-14 | 66d |
| 237 | 3.6.1 | Requirement | 1d? | 2008-07-14 | 2008-07-14 | 66d |
| 238 | 3.6.2 | Investigation | 1d? | 2008-07-14 | 2008-07-14 | 66d |
| 239 | 3.6.3 | Investigate Component | 1d? | 2008-07-14 | 2008-07-14 | 66d |
| 240 | 3.6.4 | **Developing Prototype** | 1d? | 2008-07-14 | 2008-07-14 | 66d |
| 241 | 3.6.4.1 | Design | 1d? | 2008-07-14 | 2008-07-14 | 66d |
| 242 | 3.6.5 | **Implementation** | 1d? | 2008-07-14 | 2008-07-14 | 66d |
| 243 | 3.6.5.1 | Separating out Implementation Deployment Unit | 1d? | 2008-07-14 | 2008-07-14 | 66d |
| 244 | 3.6.5.2 | Changes needed in Deployment Process | 1d? | 2008-07-14 | 2008-07-14 | 66d |
| 245 | 3.7 | **QA cycle** | 1d? | 2008-07-14 | 2008-07-14 | 66d |
| 246 | 3.7.1 | Writing testcases for new functionalities | 1d? | 2008-07-14 | 2008-07-14 | 66d |
| 247 | 3.7.2 | Build 1 for QA | 1d? | 2008-07-14 | 2008-07-14 | 66d |
| 248 | 3.7.3 | Testing Build 1 | 1d? | 2008-07-14 | 2008-07-14 | 66d |
| 249 | 3.7.4 | Fix bugs reported in Build 1 | 1d? | 2008-07-14 | 2008-07-14 | 66d |
| 250 | 3.7.5 | Demo to washU users | 1d? | 2008-07-14 | 2008-07-14 | 66d |
| 251 | 3.7.6 | Build 2 for QA | 1d? | 2008-07-14 | 2008-07-14 | 66d |
| 252 | 3.7.7 | Testing of Build 2 (by QA + washU users) | 1d? | 2008-07-14 | 2008-07-14 | 66d |
| 253 | 3.7.8 | Regression Testing | 1d? | 2008-07-14 | 2008-07-14 | 66d |
| 254 | 3.7.9 | Fix bugs reported in (Build 2 + regression testing) | 1d? | 2008-07-14 | 2008-07-14 | 66d |
| 255 | 3.8 | **Release Candidate 1** | 1d? | 2008-07-14 | 2008-07-14 | 66d |
| 256 | 3.8.1 | Release to QA + washU users for accepatance | 1d? | 2008-07-14 | 2008-07-14 | 66d |
| 257 | 3.8.2 | Verification of fixed bugs | 1d? | 2008-07-14 | 2008-07-14 | 66d |
| 258 | 3.8.3 | UAT by QA + washU users | 1d? | 2008-07-14 | 2008-07-14 | 66d |
| 259 | 3.8.4 | UAT bug fixing | 1d? | 2008-07-14 | 2008-07-14 | 66d |

| ID | WBS | Task | Duration | Start | Finish | Total slack |
| --- | --- | --- | --- | --- | --- | --- |
| 260 | 3.9 | **Release activities** | 1d? | 2008-07-14 | 2008-07-14 | 66d |
| 261 | 3.9.1 | Updating washU servers | 1d? | 2008-07-14 | 2008-07-14 | 66d |
| 262 | 3.9.2 | Updating G-forge | 1d? | 2008-07-14 | 2008-07-14 | 66d |
| 263 | 3.9.3 | Updating website (cab2b.wustl.edu) | 1d? | 2008-07-14 | 2008-07-14 | 66d |
| 264 | 3.9.4 | Updating caBIG Tools Page | 1d? | 2008-07-14 | 2008-07-14 | 66d |
| 265 | 3.10 | **Documentation** | 1d? | 2008-07-14 | 2008-07-14 | 66d |
| 266 | 3.10.1 | Admin end user manual | 1d? | 2008-07-14 | 2008-07-14 | 66d |
| 267 | 3.10.2 | Admin design document | 1d? | 2008-07-14 | 2008-07-14 | 66d |
| 268 | 3.10.3 | Update design document | 1d? | 2008-07-14 | 2008-07-14 | 66d |
| 269 | 3.10.4 | Update end user manual update | 1d? | 2008-07-14 | 2008-07-14 | 66d |
| 270 | 3.10.5 | Documentation Review | 1d? | 2008-07-14 | 2008-07-14 | 66d |
| 271 | 3.10.6 | Review by NCICB Leads | 1d? | 2008-07-14 | 2008-07-14 | 66d |
| 272 | 3.10.7 | D&T Review | 1d? | 2008-07-14 | 2008-07-14 | 66d |
| 273 | 3.11 | Final Documentation | 1d? | 2008-07-14 | 2008-07-14 | 66d |
